# iPad10.9Development

Schedule from MS Project, 2023-07-07 to 2023-07-07.

## Calendars

- Standard: Mon-Fri 08:00-12:00, 13:00-17:00; Sat-Sun off.

## Schedule

| ID | WBS | Task | Type | Duration | Start | Finish | Total slack |
| --- | --- | --- | --- | --- | --- | --- | --- |
| 1 | 1 | **Develop iPad 10.9 by Eric Hanoun and Kyle Galway** |  | 1d | 2023-07-07 | 2023-07-07 | 0d |
| 2 | 1.1 | **Initiation Phase** |  | 0d | 2023-07-07 | 2023-07-07 | 0d |
| 3 | 1.1.1 | Develop Project charter | manual | 1d? | 2023-07-07 | 2023-07-07 |  |
| 4 | 1.1.2 | Identify Stakeholders | manual | 1d? | 2023-07-07 | 2023-07-07 |  |
| 5 | 1.1.3 | Hold Kick-off Meeting | manual | 1d? | 2023-07-07 | 2023-07-07 |  |
| 6 | 1.1.4 | Initiation Phase Complete Milestone | milestone, manual | 0d | 2023-07-07 | 2023-07-07 |  |
| 7 | 1.2 | **Planning Phase** |  | 1d | 2023-07-07 | 2023-07-07 | 0d |
| 8 | 1.2.1 | Develop Project Management Plan | manual | 1d? | 2023-07-07 | 2023-07-07 |  |
| 9 | 1.2.2 | **Plan Scope Management** |  | 1d | 2023-07-07 | 2023-07-07 | 0d |
| 10 | 1.2.2.1 | Collect Requirements |  | 1d | 2023-07-07 | 2023-07-07 | 0d |
| 11 | 1.2.2.2 | Define Project Scope | manual | 1d? | 2023-07-07 | 2023-07-07 |  |
| 12 | 1.2.2.3 | Create Work Breakdown Structure |  | 1d | 2023-07-07 | 2023-07-07 | 0d |
| 13 | 1.2.2.4 | Project Scope Management Plan Defined | milestone, manual | 0d | 2023-07-07 | 2023-07-07 |  |
| 14 | 1.2.3 | **Plan Schedule Management** |  | 1d | 2023-07-07 | 2023-07-07 | 0d |
| 15 | 1.2.3.1 | Define Activites | manual | 1d? | 2023-07-07 | 2023-07-07 |  |
| 16 | 1.2.3.2 | Sequence Activities | manual | 1d? | 2023-07-07 | 2023-07-07 |  |
| 17 | 1.2.3.3 | Estimate Activity Durations |  | 1d | 2023-07-07 | 2023-07-07 | 0d |
| 18 | 1.2.3.4 | Develop Schedule | manual | 1d? | 2023-07-07 | 2023-07-07 |  |
| 19 | 1.2.3.5 | Project Schedule Management Plan Defined | milestone, manual | 0d | 2023-07-07 | 2023-07-07 |  |
| 20 | 1.2.4 | **Plan Cost Management** |  | 0d | 2023-07-07 | 2023-07-07 | 0d |
| 21 | 1.2.4.1 | Estimate Costs | manual | 1d? | 2023-07-07 | 2023-07-07 |  |
| 22 | 1.2.4.2 | Determine Project Budget | manual | 1d? | 2023-07-07 | 2023-07-07 |  |
| 23 | 1.2.4.3 | Project Cost Management Plan Defined | milestone, manual | 0d | 2023-07-07 | 2023-07-07 |  |
| 24 | 1.2.5 | **Plan Quality Management** |  | 0d | 2023-07-07 | 2023-07-07 | 0d |
| 25 | 1.2.5.1 | Project Quality Planning Complete Milestone | milestone, manual | 0d | 2023-07-07 | 2023-07-07 |  |

| ID | WBS | Task | Type | Duration | Start | Finish | Total slack |
| --- | --- | --- | --- | --- | --- | --- | --- |
| 26 | 1.2.6 | **Plan Resource Management** |  | 0d | 2023-07-07 | 2023-07-07 | 0d |
| 27 | 1.2.6.1 | Estimate Activity Resources | manual | 1d? | 2023-07-07 | 2023-07-07 |  |
| 28 | 1.2.6.2 | Project Resource Planning Complete Milestone | milestone, manual | 0d | 2023-07-07 | 2023-07-07 |  |
| 29 | 1.2.7 | **Plan Communications Management** |  | 0d | 2023-07-07 | 2023-07-07 | 0d |
| 30 | 1.2.7.1 | Project Communications Planning Complete Milestone | milestone, manual | 0d | 2023-07-07 | 2023-07-07 |  |
| 31 | 1.2.8 | **Plan Risk Management** |  | 0d | 2023-07-07 | 2023-07-07 | 0d |
| 32 | 1.2.8.1 | Identify Risks | manual | 1d? | 2023-07-07 | 2023-07-07 |  |
| 33 | 1.2.8.2 | Perform Qualitative Risk Analysis | manual | 1d? | 2023-07-07 | 2023-07-07 |  |
| 34 | 1.2.8.3 | Perform Quantitative Risk Analysis | manual | 1d? | 2023-07-07 | 2023-07-07 |  |
| 35 | 1.2.8.4 | Plan Risk Responses | manual | 1d? | 2023-07-07 | 2023-07-07 |  |
| 36 | 1.2.8.5 | Project Risk Planning Complete Milestone | milestone, manual | 0d | 2023-07-07 | 2023-07-07 |  |
| 37 | 1.2.9 | Planning Phase Complete Milestone | milestone, manual | 0d | 2023-07-07 | 2023-07-07 |  |
| 38 | 1.3 | **Executing Phase** |  | 0d | 2023-07-07 | 2023-07-07 | 0d |
| 39 | 1.3.1 | **Project Integration Management** |  | 0d | 2023-07-07 | 2023-07-07 | 1d |
| 40 | 1.3.1.1 | Direct and Manage Project Work | manual | 1d? | 2023-07-07 | 2023-07-07 |  |
| 41 | 1.3.1.2 | Manage Project Knowledge | manual | 1d? | 2023-07-07 | 2023-07-07 |  |
| 42 | 1.3.2 | **Create Proposal** |  | 0d | 2023-07-07 | 2023-07-07 | 0d |
| 43 | 1.3.2.1 | Conduct Market Research | manual | 1d? | 2023-07-07 | 2023-07-07 |  |
| 44 | 1.3.2.2 | Consult with Company Stakeholders | manual | 1d? | 2023-07-07 | 2023-07-07 |  |
| 45 | 1.3.2.3 | Develop Project Proposal | manual | 1d? | 2023-07-07 | 2023-07-07 |  |
| 46 | 1.3.2.4 | Proposal Creation Approved Milestone | milestone, manual | 0d | 2023-07-07 | 2023-07-07 |  |
| 47 | 1.3.3 | **Obtain Approval** |  | 0d | 2023-07-07 | 2023-07-07 | 0d |
| 48 | 1.3.3.1 | Discuss with Company Stakeholders | manual | 1d? | 2023-07-07 | 2023-07-07 |  |
| 49 | 1.3.3.2 | Review by Lead Designer | manual | 1d? | 2023-07-07 | 2023-07-07 |  |
| 50 | 1.3.3.3 | Review by Hardware Designer | manual | 1d? | 2023-07-07 | 2023-07-07 |  |
| 51 | 1.3.3.4 | Review by Hardware Designer | manual | 1d? | 2023-07-07 | 2023-07-07 |  |
| 52 | 1.3.3.5 | Review by Software Designer | manual | 1d? | 2023-07-07 | 2023-07-07 |  |
| 53 | 1.3.3.6 | Project Approval Obtained Milestone | milestone, manual | 0d | 2023-07-07 | 2023-07-07 |  |

| ID | WBS | Task | Type | Duration | Start | Finish | Total slack |
| --- | --- | --- | --- | --- | --- | --- | --- |
| 54 | 1.3.4 | **Tablet Design** |  | 0d | 2023-07-07 | 2023-07-07 | 0d |
| 55 | 1.3.4.1 | **Hardware Design** |  | 0d | 2023-07-07 | 2023-07-07 | 0d |
| 56 | 1.3.4.1.1 | **Screen Design** |  | 0d | 2023-07-07 | 2023-07-07 | 1d |
| 57 | 1.3.4.1.1.1 | Create Screen Prototype | manual | 1d? | 2023-07-07 | 2023-07-07 |  |
| 58 | 1.3.4.1.1.2 | Test Screen Prototype | manual | 1d? | 2023-07-07 | 2023-07-07 |  |
| 59 | 1.3.4.1.2 | **Wifi 6 Design** |  | 0d | 2023-07-07 | 2023-07-07 | 1d |
| 60 | 1.3.4.1.2.1 | Create Wi-fi 6 Adapter Prototype | manual | 1d? | 2023-07-07 | 2023-07-07 |  |
| 61 | 1.3.4.1.2.2 | Test Wi-fi Adapter Prototype | manual | 1d? | 2023-07-07 | 2023-07-07 |  |
| 62 | 1.3.4.1.3 | **Touch ID Design** |  | 0d | 2023-07-07 | 2023-07-07 | 1d |
| 63 | 1.3.4.1.3.1 | Create Touch ID Scanner Prototype | manual | 1d? | 2023-07-07 | 2023-07-07 |  |
| 64 | 1.3.4.1.3.2 | Test Touch ID Scanner Prototype | manual | 1d? | 2023-07-07 | 2023-07-07 |  |
| 65 | 1.3.4.1.4 | **Apple Pencil Design** |  | 0d | 2023-07-07 | 2023-07-07 | 1d |
| 66 | 1.3.4.1.4.1 | Create Apple Pencil Prototype | manual | 1d? | 2023-07-07 | 2023-07-07 |  |
| 67 | 1.3.4.1.4.2 | Test Apple Pencil Prototype | manual | 1d? | 2023-07-07 | 2023-07-07 |  |
| 68 | 1.3.4.1.5 | **Magic Keyboard Folio Design** |  | 0d | 2023-07-07 | 2023-07-07 | 1d |
| 69 | 1.3.4.1.5.1 | Create Magic Keyboard Folio and Trackpad Prototype | manual | 1d? | 2023-07-07 | 2023-07-07 |  |
| 70 | 1.3.4.1.5.2 | Test Magic Keyboard Folio and Trackpad Prototype | manual | 1d? | 2023-07-07 | 2023-07-07 |  |
| 71 | 1.3.4.1.6 | **Performance Benchmarking Design** |  | 0d | 2023-07-07 | 2023-07-07 | 1d |
| 72 | 1.3.4.1.6.1 | Develop A14 Bionic Chip Processor Prototype | manual | 1d? | 2023-07-07 | 2023-07-07 |  |
| 73 | 1.3.4.1.6.2 | Benchmark Processor Prototype | manual | 1d? | 2023-07-07 | 2023-07-07 |  |
| 74 | 1.3.4.1.7 | Hardware Design Complete Milestone | milestone, manual | 0d | 2023-07-07 | 2023-07-07 |  |
| 75 | 1.3.4.2 | **Software Design** |  | 0d | 2023-07-07 | 2023-07-07 | 0d |
| 76 | 1.3.4.2.1 | **Develop iPadOS** |  | 0d | 2023-07-07 | 2023-07-07 | 1d |
| 77 | 1.3.4.2.1.1 | Create UI/UX for Operating System GUI | manual | 1d? | 2023-07-07 | 2023-07-07 |  |
| 78 | 1.3.4.2.1.2 | Program OS | manual | 1d? | 2023-07-07 | 2023-07-07 |  |
| 79 | 1.3.4.2.1.3 | Benchmark OS Performance | manual | 1d? | 2023-07-07 | 2023-07-07 |  |

| ID | WBS | Task | Type | Duration | Start | Finish | Total slack |
| --- | --- | --- | --- | --- | --- | --- | --- |
| 80 | 1.3.4.2.2 | **Design Canvas APP** |  | 0d | 2023-07-07 | 2023-07-07 | 1d |
| 81 | 1.3.4.2.2.1 | Design UI/UX for Canvas | manual | 1d? | 2023-07-07 | 2023-07-07 |  |
| 82 | 1.3.4.2.2.2 | Program Canvas App | manual | 1d? | 2023-07-07 | 2023-07-07 |  |
| 83 | 1.3.4.2.2.3 | Test Canvas App | manual | 1d? | 2023-07-07 | 2023-07-07 |  |
| 84 | 1.3.4.2.3 | **Design App Store** |  | 0d | 2023-07-07 | 2023-07-07 | 1d |
| 85 | 1.3.4.2.3.1 | Design UI/UX for App Store | manual | 1d? | 2023-07-07 | 2023-07-07 |  |
| 86 | 1.3.4.2.3.2 | Program App Store | manual | 1d? | 2023-07-07 | 2023-07-07 |  |
| 87 | 1.3.4.2.3.3 | Test Compatibility with App Store | manual | 1d? | 2023-07-07 | 2023-07-07 |  |
| 88 | 1.3.4.2.4 | Software Design Completed Milestone | milestone, manual | 0d | 2023-07-07 | 2023-07-07 |  |
| 89 | 1.3.4.3 | Tablet Design Complete Milestone | milestone, manual | 0d | 2023-07-07 | 2023-07-07 |  |
| 90 | 1.3.5 | **Manufacturing Tablet** |  | 0d | 2023-07-07 | 2023-07-07 | 0d |
| 91 | 1.3.5.1 | Send Plans to Manufacturing Team | manual | 1d? | 2023-07-07 | 2023-07-07 |  |
| 92 | 1.3.5.2 | Manufacture Screen | manual | 1d? | 2023-07-07 | 2023-07-07 |  |
| 93 | 1.3.5.3 | Manufacture Magic Keyboard Folio and Trackpad | manual | 1d? | 2023-07-07 | 2023-07-07 |  |
| 94 | 1.3.5.4 | Manufacture Wi-fi 6 Adapter | manual | 1d? | 2023-07-07 | 2023-07-07 |  |
| 95 | 1.3.5.5 | Manufacture Touch ID Scanner | manual | 1d? | 2023-07-07 | 2023-07-07 |  |
| 96 | 1.3.5.6 | Manufacture Apple Pencil | manual | 1d? | 2023-07-07 | 2023-07-07 |  |
| 97 | 1.3.5.7 | Parts Manufacturing Complete Milestone | milestone, manual | 0d | 2023-07-07 | 2023-07-07 |  |
| 98 | 1.3.5.8 | Assemble Tablet from Components | manual | 1d? | 2023-07-07 | 2023-07-07 |  |
| 99 | 1.3.5.9 | Manufacturing Complete Milestone | milestone, manual | 0d | 2023-07-07 | 2023-07-07 |  |
| 100 | 1.3.6 | Executing Phase Complete Milestone | milestone, manual | 0d | 2023-07-07 | 2023-07-07 |  |
| 101 | 1.4 | **Monitoring and Controlling Phase** |  | 0d | 2023-07-07 | 2023-07-07 | 0d |
| 102 | 1.4.1 | Monitor and Control Project Work | manual | 1d? | 2023-07-07 | 2023-07-07 |  |
| 103 | 1.4.2 | Perform integrated Change Control | manual | 1d? | 2023-07-07 | 2023-07-07 |  |
| 104 | 1.4.3 | Validate Scope | manual | 1d? | 2023-07-07 | 2023-07-07 |  |
| 105 | 1.4.4 | Control Scope | manual | 1d? | 2023-07-07 | 2023-07-07 |  |
| 106 | 1.4.5 | Control Schedule | manual | 1d? | 2023-07-07 | 2023-07-07 |  |
| 107 | 1.4.6 | Control Costs | manual | 1d? | 2023-07-07 | 2023-07-07 |  |
| 108 | 1.4.7 | Control Quality | manual | 1d? | 2023-07-07 | 2023-07-07 |  |
| 109 | 1.4.8 | Control Resources | manual | 1d? | 2023-07-07 | 2023-07-07 |  |
| 110 | 1.4.9 | Monitor Communications | manual | 1d? | 2023-07-07 | 2023-07-07 |  |
| 111 | 1.4.10 | Monitor Risks | manual | 1d? | 2023-07-07 | 2023-07-07 |  |
| 112 | 1.4.11 | Control Procurements | manual | 1d? | 2023-07-07 | 2023-07-07 |  |
| 113 | 1.4.12 | monitor Stakeholder Engagement | manual | 1d? | 2023-07-07 | 2023-07-07 |  |
| 114 | 1.4.13 | Monitoring and Controlling Complete Milestone | milestone, manual | 0d | 2023-07-07 | 2023-07-07 |  |

| ID | WBS | Task | Type | Duration | Start | Finish | Total slack |
| --- | --- | --- | --- | --- | --- | --- | --- |
| 115 | 1.5 | **Closing** |  | 0d | 2023-07-07 | 2023-07-07 | 0d |
| 116 | 1.5.1 | Close Project or Phase | manual | 1d? | 2023-07-07 | 2023-07-07 |  |
| 117 | 1.5.2 | Project Complete Milestone | milestone, manual | 0d | 2023-07-07 | 2023-07-07 |  |
